Schedule from MS Project, 2009-11-16 to 2010-04-05.
Microsoft

## Calendars

- Стандартный: Mon-Fri 09:00-13:00, 14:00-18:00; Sat-Sun off.

## Resources

| Resource |
| --- |
| Доски обрезные хвойных пород длиной 4-6,5 м, шириной 75-150 мм, толщиной 32-40 мм, IV сорта |
| Кислород технический газообразный |
| Раствор готовый кладочный цементный марки 200 |
| Затраты труда рабочих-строителей Разряд 3,8 |
| Болты с гайками и шайбами строительные |
| Полуприцепы-тяжеловозы, грузоподъемность 40 т |
| Бетон |
| Краны на гусеничном ходу при работе на других видах строительства 40 т |
| Смазка солидол жировой марки <Ж> |
| Трамбовки пневматические при работе от передвижных компрессорных станций |
| Доски обрезные хвойных пород длиной 2-3,75 м, шириной 75-150 мм, толщиной 44 мм и более, II сорта |
| Затраты труда машинистов (справочно, входит в стоимость ЭМ) |
| Краны на гусеничном ходу при работе на других видах строительства 25 т |
| Автопогрузчики 5 т |
| Компрессоры передвижные с двигателем внутреннего сгорания давлением до 686 кПа(7 ат), производительность 5 м3/мин |
| Лесоматериалы круглые хвойных пород для выработки пиломатериалов и заготовок (пластины) толщиной 20-24 см, III сорта |
| Краны башенные при работе на других видах строительства 8 т |
| Затраты труда рабочих-строителей Разряд 3,7 |
| Проволока горячекатаная в мотках, диаметром 6,3-6,5 мм |
| Песок для строительных работ природный |
| Проволока наплавочная диаметром 3 мм ПП-Нп-19СТ |
| Затраты труда рабочих-строителей Разряд 4,2 |
| Тягачи седельные, грузоподъемность 15 т |
| Затраты труда рабочих-строителей Разряд 3,4 |
| Установки для сварки ручной дуговой(постоянного тока) |
| Электроды диаметром 6 мм Э42 |
| Поковки из квадратных заготовок, масса 2,825 кг |
| Ацетилен растворенный технический марки А |
| Гвозди строительные |
| Доски обрезные хвойных пород длиной 4-6,5 м, шириной 75-150 мм, толщиной 44 мм и более, II сорта |
| Конструкции сборные железобетонные |
| Автомобили бортовые, грузоподъемность до 5 т |
| Аппарат для газовой сварки и резки |
| Вибратор глубинный |
| Конструктивные элементы вспомогательного назначения с преобладанием профильного проката собираемые из двух и более деталей, с отверстиями и без отверстий, соединяемые на сварке |
| Смазка солидол жировой марки <Ж> |
| Болты с гайками и шайбами строительные |
| Установки для сварки ручной дуговой(постоянного тока) |
| Конструктивные элементы вспомогательного назначения с преобладанием профильного проката собираемые из двух и более деталей, с отверстиями и без отверстий, соединяемые на сварке |
| Компрессоры передвижные с двигателем внутреннего сгорания давлением до 686 кПа(7 ат), производительность 5 м3/мин |
| Поковки из квадратных заготовок, масса 2,825 кг |
| Затраты труда рабочих-строителей Разряд 3,4 |
| Кислород технический газообразный |
| Доски обрезные хвойных пород длиной 2-3,75 м, шириной 75-150 мм, толщиной 44 мм и более, II сорта |
| Затраты труда рабочих-строителей Разряд 3,7 |
| Краны на гусеничном ходу при работе на других видах строительства 40 т |
| Краны на гусеничном ходу при работе на других видах строительства 25 т |
| Доски обрезные хвойных пород длиной 4-6,5 м, шириной 75-150 мм, толщиной 44 мм и более, II сорта |
| Трамбовки пневматические при работе от передвижных компрессорных станций |
| Полуприцепы-тяжеловозы, грузоподъемность 40 т |
| Аппарат для газовой сварки и резки |
| Проволока наплавочная диаметром 3 мм ПП-Нп-19СТ |
| Проволока горячекатаная в мотках, диаметром 6,3-6,5 мм |
| Затраты труда машинистов (справочно, входит в стоимость ЭМ) |
| Автопогрузчики 5 т |
| Лесоматериалы круглые хвойных пород для выработки пиломатериалов и заготовок (пластины) толщиной 20-24 см, III сорта |
| Тягачи седельные, грузоподъемность 15 т |
| Вибратор глубинный |
| Затраты труда рабочих-строителей Разряд 4,2 |
| Электроды диаметром 6 мм Э42 |
| Раствор готовый кладочный цементный марки 200 |
| Затраты труда рабочих-строителей Разряд 3,8 |
| Песок для строительных работ природный |
| Конструкции сборные железобетонные |
| Доски обрезные хвойных пород длиной 4-6,5 м, шириной 75-150 мм, толщиной 32-40 мм, IV сорта |
| Ацетилен растворенный технический марки А |
| Краны башенные при работе на других видах строительства 8 т |
| Автомобили бортовые, грузоподъемность до 5 т |
| Бетон |
| Гвозди строительные |
| Конструкции сборные железобетонные |
| Компрессоры передвижные с двигателем внутреннего сгорания давлением до 686 кПа(7 ат), производительность 5 м3/мин |
| Краны на гусеничном ходу при работе на других видах строительства 25 т |
| Затраты труда машинистов (справочно, входит в стоимость ЭМ) |
| Полуприцепы-тяжеловозы, грузоподъемность 40 т |
| Автопогрузчики 5 т |
| Песок для строительных работ природный |
| Трамбовки пневматические при работе от передвижных компрессорных станций |
| Затраты труда рабочих-строителей Разряд 3,4 |
| Тягачи седельные, грузоподъемность 15 т |
| Песок для строительных работ природный |
| Конструкции сборные железобетонные |
| Компрессоры передвижные с двигателем внутреннего сгорания давлением до 686 кПа(7 ат), производительность 5 м3/мин |
| Затраты труда машинистов (справочно, входит в стоимость ЭМ) |
| Автопогрузчики 5 т |
| Трамбовки пневматические при работе от передвижных компрессорных станций |
| Полуприцепы-тяжеловозы, грузоподъемность 40 т |
| Затраты труда рабочих-строителей Разряд 3,4 |
| Краны на гусеничном ходу при работе на других видах строительства 25 т |
| Тягачи седельные, грузоподъемность 15 т |
| Полуприцепы-тяжеловозы, грузоподъемность 40 т |
| Компрессоры передвижные с двигателем внутреннего сгорания давлением до 686 кПа(7 ат), производительность 5 м3/мин |
| Затраты труда рабочих-строителей Разряд 3,4 |
| Краны на гусеничном ходу при работе на других видах строительства 25 т |
| Трамбовки пневматические при работе от передвижных компрессорных станций |
| Песок для строительных работ природный |
| Конструкции сборные железобетонные |
| Затраты труда машинистов (справочно, входит в стоимость ЭМ) |
| Автопогрузчики 5 т |
| Тягачи седельные, грузоподъемность 15 т |
| Песок для строительных работ природный |
| Затраты труда машинистов (справочно, входит в стоимость ЭМ) |
| Тягачи седельные, грузоподъемность 15 т |
| Компрессоры передвижные с двигателем внутреннего сгорания давлением до 686 кПа(7 ат), производительность 5 м3/мин |
| Трамбовки пневматические при работе от передвижных компрессорных станций |
| Полуприцепы-тяжеловозы, грузоподъемность 40 т |
| Автопогрузчики 5 т |
| Конструкции сборные железобетонные |
| Затраты труда рабочих-строителей Разряд 3,4 |
| Краны на гусеничном ходу при работе на других видах строительства 25 т |
| Гвозди строительные |
| Арматура |
| Автопогрузчики 5 т |
| Вибратор глубинный |
| Рогожа |
| Гвозди толевые круглые 3,0х40 мм |
| Бруски обрезные хвойных пород длиной 4-6,5 м, шириной 75-150 мм, толщиной 40-75 мм, III сорта |
| Смазка солидол жировой марки <Ж> |
| Симазин 50%-ный порошок смачивающийся |
| Плиты гипсовые толщиной до 100 мм |
| Затраты труда рабочих-строителей Разряд 4 |
| Песок для строительных работ природный |
| Лесоматериалы круглые хвойных пород для выработки пиломатериалов и заготовок (пластины) толщиной 20-24 см, III сорта |
| Гвозди проволочные круглые формовочные 1,6х100 мм |
| Трамбовки пневматические при работе от стационарного компрессора |
| Раствор готовый кладочный цементный марки 200 |
| Толь с крупнозернистой посыпкой гидроизоляционный марки ТГ-350 |
| Вибратор поверхностный |
| Бетон тяжелый |
| Затраты труда рабочих-строителей Разряд 3,2 |
| Аппарат для газовой сварки и резки |
| Проволока наплавочная диаметром 3 мм ПП-Нп-19СТ |
| Комплексы вакуумные типа СО-177 |
| Краны башенные при работе на других видах строительства 10 т |
| Ацетилен растворенный технический марки А |
| Затраты труда рабочих-строителей Разряд 3,1 |
| Рубероид подкладочный с пылевидной посыпкой РПП-300б |
| Раствор готовый кладочный цементный марки 50 |
| Конструкции сборные железобетонные |
| Плитки керамические для полов гладкие неглазурованные многоцветные квадратные и прямоугольные |
| Затраты труда рабочих-строителей Разряд 3,4 |
| Доски обрезные хвойных пород длиной 4-6,5 м, шириной 75-150 мм, толщиной 44 мм и более, III сорта |
| Подъемники грузоподъемностью до 500 кг одномачтовые, высота подъема 45 м |
| Полуприцепы-тяжеловозы, грузоподъемность 40 т |
| Краны башенные при работе на других видах строительства 8 т |
| Доски обрезные хвойных пород длиной 2-3,75 м, шириной 75-150 мм, толщиной 44 мм и более, II сорта |
| Материалы рулонные кровельные |
| Ветошь |
| Шуруповерт |
| Доски обрезные хвойных пород длиной 4-6,5 м, шириной 75-150 мм, толщиной 32-40 мм, IV сорта |
| Доски обрезные хвойных пород длиной 4-6,5 м, шириной 75-150 мм, толщиной 44 мм и более, II сорта |
| Компрессоры передвижные с двигателем внутреннего сгорания давлением до 686 кПа(7 ат), производительность 5 м3/мин |
| Котлы битумные передвижные 400 л |
| Поковки из квадратных заготовок, масса 1,8 кг |
| Гравий для строительных работ, фракция 5 -10 мм |
| Проволока светлая диаметром 1,1 мм |
| Гипсовые вяжущие, марка Г3 |
| Вода |
| Опалубка переставная(амортизация) |
| Доски обрезные хвойных пород длиной 4-6,5 м, шириной 75-150 мм, толщиной 25 мм, III сорта |
| Проволока горячекатаная в мотках, диаметром 6,3-6,5 мм |
| Шурупы строительные |
| Затраты труда рабочих-строителей Разряд 2,7 |
| Бетон |
| Болты с гайками и шайбами строительные |
| Доски подоконные деревянные |
| Тягачи седельные, грузоподъемность 15 т |
| Установки для сварки ручной дуговой(постоянного тока) |
| Автомобили бортовые, грузоподъемность до 8 т |
| Затраты труда рабочих-строителей Разряд 3,8 |
| Горячекатаная арматурная сталь класс а А-I |
| Доски обрезные хвойных пород длиной 2-3,75 м, шириной 75-150 мм, толщиной 25 мм, IV сорта |
| Смола каменноугольная для дорожного строительства |
| Пила цепная электрическая |
| Краны на гусеничном ходу при работе на других видах строительства 25 т |
| Раствор готовый отделочный тяжелый, известковый 1:2,0 |
| Скобяные изделия |
| Кислород технический газообразный |
| Войлок строительный |
| Палуба опалубки типа<Дока> из бакелизированной фанеры |
| Раствор готовый кладочный тяжелый цементный |
| Конструктивные элементы вспомогательного назначения с преобладанием профильного проката собираемые из двух и более деталей, с отверстиями и без отверстий, соединяемые на сварке |
| Затраты труда машинистов (справочно, входит в стоимость ЭМ) |
| Трамбовки пневматические при работе от передвижных компрессорных станций |
| Затраты труда рабочих-строителей Разряд 3,7 |
| Пена монтажная |
| Натрий фтористый технический, марка А, сорт I |
| Поковки из квадратных заготовок, масса 2,825 кг |
| Горячекатаная арматурная сталь гладкая класса А-I, диаметром 14 мм |
| Затраты труда рабочих-строителей Разряд 3,6 |
| Электроды диаметром 6 мм Э42 |
| Блоки дверные |
| Краны на автомобильном ходу при работе на других видах строительства 10 т |
| Опалубка типа<Дока> (конструкции металлические) |
| Опилки древесные |
| Затраты труда рабочих-строителей Разряд 4,2 |
| Мастика битумная кровельная горячая |
| Масла антраценовые |
| Блоки оконные |
| Линолеум на теплозвукоизолирующей подоснове |
| Клей <Бустилат> |
| Толь с крупнозернистой посыпкой марки ТВК-350 |
| Автомобили бортовые, грузоподъемность до 5 т |
| Раствор готовый отделочный тяжелый, известковый 1:3 |
| Электроды диаметром 4 мм Э42 |
| Краны на гусеничном ходу при работе на других видах строительства 40 т |
| Трамбовки пневматические при работе от передвижных компрессорных станций |
| Доски обрезные хвойных пород длиной 4-6,5 м, шириной 75-150 мм, толщиной 32-40 мм, IV сорта |
| Автогрейдеры среднего типа 99 кВт(135 л.с.) |
| Конструкции сборные железобетонные |
| Гвозди строительные |
| Автопогрузчики 5 т |
| Компрессоры передвижные с двигателем внутреннего сгорания давлением до 686 кПа(7 ат), производительность 5 м3/мин |
| Доски обрезные хвойных пород длиной 4-6,5 м, шириной 75-150 мм, толщиной 44 мм и более, II сорта |
| Затраты труда рабочих-строителей Разряд 3,4 |
| Экскаваторы одноковшовые дизельные на гусеничном ходу при работе на других видах строительства 0,5 м3 |
| Доски обрезные хвойных пород длиной 2-3,75 м, шириной 75-150 мм, толщиной 44 мм и более, II сорта |
| Аппарат для газовой сварки и резки |
| Затраты труда рабочих-строителей Разряд 4,2 |
| Смазка солидол жировой марки <Ж> |
| Установки для сварки ручной дуговой(постоянного тока) |
| Болты с гайками и шайбами строительные |
| Песок для строительных работ природный |
| Электроды диаметром 6 мм Э42 |
| Бульдозеры при работе на других видах строительства 79 кВт (108 л.с.) |
| Затраты труда машинистов (справочно, входит в стоимость ЭМ) |
| Проволока горячекатаная в мотках, диаметром 6,3-6,5 мм |
| Тягачи седельные, грузоподъемность 15 т |
| Проволока наплавочная диаметром 3 мм ПП-Нп-19СТ |
| Кислород технический газообразный |
| Краны на гусеничном ходу при работе на других видах строительства 40 т |
| Поковки из квадратных заготовок, масса 2,825 кг |
| Краны на гусеничном ходу при работе на других видах строительства 25 т |
| Лесоматериалы круглые хвойных пород для выработки пиломатериалов и заготовок (пластины) толщиной 20-24 см, III сорта |
| Бетон |
| Затраты труда рабочих-строителей Разряд 3,7 |
| Конструктивные элементы вспомогательного назначения с преобладанием профильного проката собираемые из двух и более деталей, с отверстиями и без отверстий, соединяемые на сварке |
| Затраты труда рабочих-строителей Разряд 3,8 |
| Раствор готовый кладочный цементный марки 200 |
| Ацетилен растворенный технический марки А |
| Полуприцепы-тяжеловозы, грузоподъемность 40 т |
| Краны башенные при работе на других видах строительства 8 т |
| Автомобили бортовые, грузоподъемность до 5 т |
| Вибратор глубинный |

## Schedule

| ID | Task | Duration | Start | Finish | Predecessors | Total slack | Free slack |
| --- | --- | --- | --- | --- | --- | --- | --- |
| 1 | Подготовительные работы | 10d | 2009-11-16 | 2009-11-27 |  | 0d |  |
| 2 | Планировка площадей | 1d | 2009-11-30 | 2009-11-30 | 1 | 0d |  |
| 3 | Прочие и неучтенные общестроительные работы | 5d | 2009-11-30 | 2009-12-04 | 1 | 69d | 0d |
| 4 | Разработка грунта в отвал в котлованах | 1d | 2009-12-01 | 2009-12-01 | 2 | 0d |  |
| 5 | Укладка фундаментов под колонны | 7d | 2009-12-02 | 2009-12-10 | 4 | 0d |  |
| 6 | Укладка ригелей | 1d | 2009-12-11 | 2009-12-11 | 5 | 0d |  |
| 7 | Сантехнические работы 1-я стадия | 5d | 2009-12-11 | 2009-12-17 | 5 | 77d |  |
| 8 | Электромонтажные работы 1 стадия | 5d | 2009-12-11 | 2009-12-17 | 5 | 77d |  |
| 9 | Установка диафрагм жесткости | 8d | 2009-12-14 | 2009-12-23 | 6 | 0d |  |
| 10 | Укладка ригелей | 3d | 2009-12-14 | 2009-12-16 | 6 | 8d | 5d |
| 11 | Установка колонн прямоугольного сечения в стаканы фундаментов зданий | 7d | 2009-12-24 | 2010-01-01 | 9 | 0d |  |
| 12 | Укладка плит перекрытий | 7d | 2010-01-04 | 2010-01-12 | 11 | 1d | 0d |
| 13 | Укладка блоков и плит ленточных фундаментов | 3d | 2010-01-13 | 2010-01-15 | 12 | 4d | 0d |
| 14 | Установка перегородок из гипсовых плит | 2d | 2010-01-18 | 2010-01-19 | 13 | 4d | 0d |
| 15 | Укладка перемычек | 4d | 2010-01-20 | 2010-01-25 | 14 | 4d | 0d |
| 16 | Устройство кровель | 2d | 2010-01-26 | 2010-01-27 | 15 | 6d | 0d |
| 17 | Устройство лестничных маршей в опалубке | 3d | 2010-01-28 | 2010-02-01 | 16 | 6d |  |
| 18 | Установка диафрагм жесткости | 4d | 2009-12-24 | 2009-12-29 | 10, 9 | 3d |  |
| 19 | Установка колонн прямоугольного сечения в стаканы фундаментов зданий | 8d | 2010-01-04 | 2010-01-13 | 18, 11 | 0d |  |
| 20 | Укладка плит перекрытий | 6d | 2010-01-14 | 2010-01-21 | 19, 12 | 0d |  |
| 21 | Укладка блоков и плит ленточных фундаментов | 5d | 2010-01-22 | 2010-01-28 | 20, 13 | 0d |  |
| 22 | Установка перегородок из гипсовых плит | 1d | 2010-01-29 | 2010-01-29 | 21, 14 | 0d |  |
| 23 | Укладка перемычек | 5d | 2010-02-01 | 2010-02-05 | 22, 15 | 0d |  |
| 24 | Устройство кровель | 2d | 2010-02-08 | 2010-02-09 | 23, 16 | 0d |  |
| 25 | Устройство лестничных маршей в опалубке | 3d | 2010-02-10 | 2010-02-12 | 24, 17 | 0d |  |
| 26 | Устройство полов бетонных толщиной | 5d | 2010-02-15 | 2010-02-19 | 25 | 0d |  |
| 27 | Сантехнические работы 2-я стадия | 4d | 2010-02-15 | 2010-02-18 | 25 | 22d |  |
| 28 | Электромонтажные работы 2 стадия | 4d | 2010-02-15 | 2010-02-18 | 25 | 22d |  |
| 29 | Устройство покрытий | 2d | 2010-02-22 | 2010-02-23 | 26 | 1d | 0d |
| 30 | Устройство покрытий на цементном растворе из плиток | 3d | 2010-02-24 | 2010-02-26 | 29 | 1d | 0d |
| 31 | Установка в жилых и общественных зданиях блоков оконных с переплетами | 4d | 2010-03-01 | 2010-03-04 | 30 | 1d | 0d |
| 32 | Установка деревянных дверных блоков | 2d | 2010-03-05 | 2010-03-08 | 31 | 1d | 0d |
| 33 | Установка деревянных подоконных досок в каменных стенах | 1d | 2010-03-09 | 2010-03-09 | 32 | 1d |  |
| 34 | Устройство полов бетонных толщиной | 5d | 2010-02-22 | 2010-02-26 | 26 | 0d |  |
| 35 | Устройство покрытий | 2d | 2010-03-01 | 2010-03-02 | 34, 29 | 0d |  |
| 36 | Устройство покрытий на цементном растворе из плиток | 3d | 2010-03-03 | 2010-03-05 | 35, 30 | 0d |  |
| 37 | Установка в жилых и общественных зданиях блоков оконных с переплетами | 2d | 2010-03-08 | 2010-03-09 | 36, 31 | 0d |  |
| 38 | Установка деревянных дверных блоков | 1d | 2010-03-10 | 2010-03-10 | 37, 32 | 0d |  |
| 39 | Установка деревянных подоконных досок в каменных стенах | 1d | 2010-03-11 | 2010-03-11 | 38, 33 | 0d |  |
| 40 | Монтаж оборудования | 7d | 2010-03-12 | 2010-03-22 | 39 | 0d |  |
| 41 | Дороги, подъезды тротуары | 5d | 2010-03-23 | 2010-03-29 | 40, 27, 28 | 0d |  |
| 42 | Озеленение | 1d | 2010-03-30 | 2010-03-30 | 41 | 0d |  |
| 43 | Пусконаладочные работы | 3d | 2010-03-31 | 2010-04-02 | 42, 3 | 0d |  |
| 44 | Ввод в эксплуатацию | 1d | 2010-04-05 | 2010-04-05 | 43 | 0d |  |
